# IMP-II : ingénierie détaillée et rapport 13 (échéancier révisé)

Schedule from GanttProject, 2026-11-16 to 2026-12-24.
UQAC, 6GEN135
Échéancier révisé du rapport 13, état au 26 novembre 2026. Dates telles qu'inscrites sur les tâches du tableau GitHub IMP-II. J3 atteint le 20 novembre ; J5 avancé au jeudi 10 décembre ; le rapport 13 tient lieu de rapport final et se remet le 24 décembre. Tâches rouges : marge nulle (chemin critique). Liens fin-début, jours ouvrables.

## Calendars

- Project calendar: Mon-Fri working; Sat-Sun off.

## Resources

| Resource |
| --- |
| Christian Kévin Sawadogo |
| Sidiki |
| Raouf |
| Rayane |
| Ibrahima |
| Jérémie |
| Abdramane |
| Wilson |

## Schedule

| ID | WBS | Task | Type | Duration | Start | Finish | Predecessors | Complete | Resources |
| --- | --- | --- | --- | --- | --- | --- | --- | --- | --- |
| 1 | 1 | **Sprint 1 : prototype intégré et gel (J3)** |  | 5d | 2026-11-16 | 2026-11-20 |  | 100% |  |
| 2 | 1.1 | #96 SS-2 final fusionné |  | 2d | 2026-11-16 | 2026-11-17 |  | 100% | Sidiki |
| 3 | 1.2 | #78 SS-3 final et essai de cohérence C1 |  | 1d | 2026-11-18 | 2026-11-18 | 2 | 100% | Raouf |
| 4 | 1.3 | #83 SS-4 : convention S ≥ h et seuil h |  | 1d | 2026-11-19 | 2026-11-19 | 3 | 100% | Rayane |
| 5 | 1.4 | #103 SS-5 : interface Plotly Dash |  | 3d | 2026-11-16 | 2026-11-18 |  | 100% | Jérémie |
| 6 | 1.5 | #104 SS-5 : demande de confirmation en D2 |  | 1d | 2026-11-19 | 2026-11-19 | 5 | 100% | Jérémie |
| 7 | 1.6 | #113 Remettre le module SS-6 à Ibrahima |  | 1d | 2026-11-16 | 2026-11-16 |  | 100% | Wilson |
| 8 | 1.7 | #90 SS-6 : scelleur et vérificateur dans le squelette |  | 3d | 2026-11-17 | 2026-11-19 | 7 | 100% | Ibrahima |
| 9 | 1.8 | #89 SS-1 : essai d’interface et indépendance de SS-2 |  | 2d | 2026-11-16 | 2026-11-17 |  | 100% | Ibrahima |
| 10 | 1.9 | #71 Intégration, figure 2-1, document partagé |  | 4d | 2026-11-16 | 2026-11-19 |  | 100% | Christian Kévin Sawadogo |
| 11 | 1.10 | #105 Recruter les 5 participants (utilisabilité) |  | 5d | 2026-11-16 | 2026-11-20 |  | 100% | Abdramane |
| 12 | 1.11 | #72 Démonstration du J3 et gel des fonctionnalités |  | 1d | 2026-11-20 | 2026-11-20 | 2, 3, 4, 6, 8, 9 | 100% | Christian Kévin Sawadogo; Sidiki |
| 13 | 1.12 | ◆ J3 : prototype intégré et gel | milestone | 0d | 2026-11-23 | 2026-11-23 | 10, 12 | 100% |  |
| 14 | 2 | **Sprint 2 : campagne d’essais (J4)** |  | 10d | 2026-11-23 | 2026-12-04 |  | 13% |  |
| 15 | 2.1 | #127 Correctif G1 : réponse opérateur via la file |  | 4d | 2026-11-23 | 2026-11-26 | 13 | 100% | Jérémie |
| 16 | 2.2 | #128 Correctif G2 : mode opérateur sans grandeurs vraies |  | 4d | 2026-11-23 | 2026-11-26 | 13 | 100% | Jérémie |
| 17 | 2.3 | #84 Campagne statistique sur la version gelée |  | 8d | 2026-11-23 | 2026-12-02 | 13 | 100% | Raouf; Rayane |
| 18 | 2.4 | #79 Confirmation de C1 sur la version gelée |  | 9d | 2026-11-23 | 2026-12-03 | 13 |  | Raouf |
| 19 | 2.5 | #97 Essais fonctionnels sur la version gelée |  | 9d | 2026-11-23 | 2026-12-03 | 13 |  | Sidiki |
| 20 | 2.6 | #114 Lancer l’essai d’endurance de 120 min |  | 2d | 2026-11-27 | 2026-11-30 | 8, 13 |  | Wilson |
| 21 | 2.7 | #98 Analyse de l’endurance et du temps de cycle |  | 3d | 2026-12-01 | 2026-12-03 | 20 |  | Sidiki |
| 22 | 2.8 | #106 Essai d’utilisabilité EX-Q-03 |  | 5d | 2026-11-27 | 2026-12-03 | 11, 16 |  | Ibrahima; Jérémie; Abdramane |
| 23 | 2.9 | #85 Bilan exigence par exigence (L06) |  | 1d | 2026-12-04 | 2026-12-04 | 17, 18, 19, 21, 22 |  | Rayane |
| 24 | 2.10 | #92 Données de calcul pour la section 5.1 |  | 5d | 2026-11-30 | 2026-12-04 | 13 |  | Ibrahima |
| 25 | 2.11 | #91 Annexe des comparaisons expérimentales SS-1 |  | 8d | 2026-11-23 | 2026-12-02 | 13 |  | Ibrahima |
| 26 | 2.12 | #99 Revue de conception : avis des parties prenantes |  | 10d | 2026-11-23 | 2026-12-04 | 13 |  | Sidiki |
| 27 | 2.13 | #73 Lot A p.1 : sections 3.2, 3.3, 3.4, 4.1, 4.8 |  | 8d | 2026-11-23 | 2026-12-02 | 13 |  | Christian Kévin Sawadogo |
| 28 | 2.14 | #80 Lot E p.1 : sections 3.1, 4.4, 4.9 |  | 8d | 2026-11-23 | 2026-12-02 | 13 |  | Raouf |
| 29 | 2.15 | #86 Lot F p.1 : section 4.5 SS-4 |  | 8d | 2026-11-23 | 2026-12-02 | 13 |  | Rayane |
| 30 | 2.16 | #93 Lot C : sections 1, 4.2, 4.7 |  | 8d | 2026-11-23 | 2026-12-02 | 13 |  | Ibrahima |
| 31 | 2.17 | #100 Lot D p.1 : sections 3.5, 4.3 |  | 8d | 2026-11-23 | 2026-12-02 | 13 |  | Sidiki |
| 32 | 2.18 | #107 Lot G p.1 : sections 3.6, 4.6 |  | 8d | 2026-11-23 | 2026-12-02 | 13 |  | Jérémie |
| 33 | 2.19 | #102 Révision du lot C d’Ibrahima |  | 2d | 2026-12-03 | 2026-12-04 | 30 |  | Sidiki |
| 34 | 2.20 | ◆ J4 : campagne d’essais terminée | milestone | 0d | 2026-12-07 | 2026-12-07 | 15, 23 |  |  |

Notes:
- 2: Marge totale : 0 jour(s) ouvrable(s) (chemin critique)
- 3: Marge totale : 0 jour(s) ouvrable(s) (chemin critique)
- 4: Marge totale : 0 jour(s) ouvrable(s) (chemin critique)
- 5: Marge totale : 0 jour(s) ouvrable(s) (chemin critique)
- 6: Marge totale : 0 jour(s) ouvrable(s) (chemin critique)
- 7: Marge totale : 0 jour(s) ouvrable(s) (chemin critique)
- 8: Marge totale : 0 jour(s) ouvrable(s) (chemin critique)
- 9: Marge totale : 2 jour(s) ouvrable(s)
- 10: Marge totale : 1 jour(s) ouvrable(s)
- 11: Marge totale : 4 jour(s) ouvrable(s)
- 12: Marge totale : 0 jour(s) ouvrable(s) (chemin critique)
- 13: Marge totale : 0 jour(s) ouvrable(s) (chemin critique)
- 15: Marge totale : 6 jour(s) ouvrable(s)
- 16: Marge totale : 0 jour(s) ouvrable(s) (chemin critique)
- 17: Marge totale : 1 jour(s) ouvrable(s)
- 18: Marge totale : 0 jour(s) ouvrable(s) (chemin critique)
- 19: Marge totale : 0 jour(s) ouvrable(s) (chemin critique)
- 20: Marge totale : 0 jour(s) ouvrable(s) (chemin critique)
- 21: Marge totale : 0 jour(s) ouvrable(s) (chemin critique)
- 22: Marge totale : 0 jour(s) ouvrable(s) (chemin critique)
- 23: Marge totale : 0 jour(s) ouvrable(s) (chemin critique)
- 24: Marge totale : 0 jour(s) ouvrable(s) (chemin critique)
- 25: Marge totale : 12 jour(s) ouvrable(s)
- 26: Marge totale : 5 jour(s) ouvrable(s)
- 27: Marge totale : 9 jour(s) ouvrable(s)
- 28: Marge totale : 9 jour(s) ouvrable(s)
- 29: Marge totale : 9 jour(s) ouvrable(s)
- 30: Marge totale : 10 jour(s) ouvrable(s)
- 31: Marge totale : 9 jour(s) ouvrable(s)
- 32: Marge totale : 9 jour(s) ouvrable(s)
- 33: Marge totale : 10 jour(s) ouvrable(s)
- 34: Marge totale : 0 jour(s) ouvrable(s) (chemin critique)

| ID | WBS | Task | Type | Duration | Start | Finish | Predecessors | Resources |
| --- | --- | --- | --- | --- | --- | --- | --- | --- |
| 35 | 3 | **Sprint 3 : présentation (J5) et rédaction** |  | 10d | 2026-12-07 | 2026-12-18 |  |  |
| 36 | 3.1 | #115 Compiler les heures au 4 décembre |  | 1d | 2026-12-07 | 2026-12-07 | 34 | Wilson |
| 37 | 3.2 | #77 Révision lot H : heures au 4 décembre |  | 1d | 2026-12-08 | 2026-12-08 | 36 | Christian Kévin Sawadogo |
| 38 | 3.3 | #94 Présentation orale (support, répétition, J5) |  | 4d | 2026-12-07 | 2026-12-10 | 34 | Ibrahima |
| 39 | 3.4 | ◆ J5 : présentation orale (10 décembre) | milestone | 0d | 2026-12-10 | 2026-12-10 |  |  |
| 40 | 3.5 | #81 Lot E p.2 : sections 5.2, 7.1 |  | 6d | 2026-12-07 | 2026-12-14 | 34 | Raouf |
| 41 | 3.6 | #108 Lot G p.2 : sections 5.4, 8 |  | 6d | 2026-12-07 | 2026-12-14 | 34 | Jérémie |
| 42 | 3.7 | #110 Lot B : sections 2, 6.3 |  | 6d | 2026-12-07 | 2026-12-14 | 34 | Abdramane |
| 43 | 3.8 | #101 Lot D p.2 : sections 5.5, 6.1 |  | 2d | 2026-12-11 | 2026-12-14 | 26, 39 | Sidiki |
| 44 | 3.9 | #87 Lot F p.2 : sections 5.1, 5.3, 5.6, 11 |  | 10d | 2026-12-07 | 2026-12-18 | 23, 24 | Rayane |
| 45 | 3.10 | #75 Lot A p.2 : sections 6.2, 7.2, 9, 10, résumé |  | 8d | 2026-12-09 | 2026-12-18 | 37 | Christian Kévin Sawadogo |
| 46 | 3.11 | #116 Révision du lot A de Christian |  | 3d | 2026-12-15 | 2026-12-17 | 27 | Wilson |
| 47 | 3.12 | #88 Révision du lot E de Raouf |  | 3d | 2026-12-15 | 2026-12-17 | 28, 40 | Rayane |
| 48 | 3.13 | #82 Révision du lot D de Sidiki |  | 3d | 2026-12-15 | 2026-12-17 | 31, 43 | Raouf |
| 49 | 3.14 | #109 Révision du lot F de Rayane |  | 3d | 2026-12-15 | 2026-12-17 | 29 | Jérémie |
| 50 | 3.15 | #111 Révision du lot G de Jérémie |  | 3d | 2026-12-15 | 2026-12-17 | 32, 41 | Abdramane |
| 51 | 3.16 | #95 Révision du lot B d’Abdramane |  | 3d | 2026-12-15 | 2026-12-17 | 42 | Ibrahima |
| 52 | 3.17 | ◆ Révision des sections 5 à 9 terminée | milestone | 0d | 2026-12-18 | 2026-12-18 | 33, 46, 47, 48, 49, 50, 51 |  |
| 53 | 4 | **Dépôt du rapport 13** |  | 3d | 2026-12-21 | 2026-12-23 |  |  |
| 54 | 4.1 | #76 Intégration et cohérence du rapport 13 |  | 1d | 2026-12-21 | 2026-12-21 | 25, 44, 45, 52 | Christian Kévin Sawadogo |
| 55 | 4.2 | #117 Relecture de la langue |  | 1d | 2026-12-22 | 2026-12-22 | 54 | Wilson |
| 56 | 4.3 | #112 Mise en forme et export PDF |  | 1d | 2026-12-23 | 2026-12-23 | 55 | Abdramane |
| 57 | 4.4 | ◆ Dépôt du rapport 13, qui tient lieu de rapport final (24 décembre) | milestone | 0d | 2026-12-24 | 2026-12-24 | 56 |  |

Notes:
- 36: Marge totale : 0 jour(s) ouvrable(s) (chemin critique)
- 37: Marge totale : 0 jour(s) ouvrable(s) (chemin critique)
- 38: Marge totale : 1 jour(s) ouvrable(s)
- 39: Présentation orale le jeudi 10 décembre (avancée du 18 décembre), jour où se termine #94 ; date fixée, sans lien entrant.
- 40: Marge totale : 1 jour(s) ouvrable(s)
- 41: Marge totale : 1 jour(s) ouvrable(s)
- 42: Marge totale : 1 jour(s) ouvrable(s)
- 43: Marge totale : 1 jour(s) ouvrable(s)
- 44: Marge totale : 0 jour(s) ouvrable(s) (chemin critique)
- 45: Marge totale : 0 jour(s) ouvrable(s) (chemin critique)
- 46: Marge totale : 1 jour(s) ouvrable(s)
- 47: Marge totale : 1 jour(s) ouvrable(s)
- 48: Marge totale : 1 jour(s) ouvrable(s)
- 49: Marge totale : 1 jour(s) ouvrable(s)
- 50: Marge totale : 1 jour(s) ouvrable(s)
- 51: Marge totale : 1 jour(s) ouvrable(s)
- 52: Marge totale : 1 jour(s) ouvrable(s)
- 54: Marge totale : 0 jour(s) ouvrable(s) (chemin critique)
- 55: Marge totale : 0 jour(s) ouvrable(s) (chemin critique)
- 56: Marge totale : 0 jour(s) ouvrable(s) (chemin critique)
- 57: Marge totale : 0 jour(s) ouvrable(s) (chemin critique)
